# Projeto_SoluçõesRifa

How a schedule from MS Project changed from version to version. A marks actual dates.

## Version 1 (saved 2009-10-19, file Projeto_SoluçõesRifa.mpp)

| ID | WBS | Task | Duration | Start | Finish | Predecessors | Total float | Constraint |
| --- | --- | --- | --- | --- | --- | --- | --- | --- |
| 1 | 1 | **Soluções para Rifas** | 28.88d? | 2009-10-13 | 2009-11-20 |  | 0d |  |
| 2 | 1.1 | **Declaração do Escopo projeto** | 2.88d? | 2009-10-13 | 2009-10-15 |  | 0d |  |
| 3 |  | Reunião com cliente | 0.38d? | 2009-10-13 | 2009-10-13 |  | 0d |  |
| 4 |  | Definição do escopo do produto | 2d? | 2009-10-13 | 2009-10-15 | 3 | 0d |  |
| 5 |  | Aprovação | 0.5d? | 2009-10-15 | 2009-10-15 | 4 | 0d |  |
| 6 | 1.2 | **Definição do escopo do projeto** | 11.5d? | 2009-10-15 | 2009-11-02 | 2 | 0d |  |
| 7 |  | Modelar negócio | 2d? | 2009-10-15 | 2009-10-19 |  | 0d |  |
| 8 |  | Requisitos do sistema e aprovação | 1d? | 2009-10-19 | 2009-10-20 | 7 | 0d |  |
| 9 |  | Contratação da equipe | 3d? | 2009-10-20 | 2009-10-23 | 8 | 0d |  |
| 10 |  | Aquisição de recursos | 5d? | 2009-10-23 | 2009-10-30 | 9 | 0d | finish no earlier than 2009-10-26 |
| 11 |  | Definição de custo e aprovação | 0.5d? | 2009-10-30 | 2009-11-02 | 10 | 0d |  |
| 12 | 1.3 | **Módulo de Cadastro** | 14.5d? | 2009-11-02 | 2009-11-20 | 6 | 0d |  |
| 13 |  | Revisar requisitos | 0.5d? | 2009-11-02 | 2009-11-02 |  | 0d | start no earlier than 2009-10-21 |
| 14 |  | Aprovação | 0.5d? | 2009-11-02 | 2009-11-03 | 13 | 0d | start no earlier than 2009-10-21 |
| 15 |  | Análise e projeto | 2d? | 2009-11-03 | 2009-11-05 | 14 | 0d |  |
| 16 |  | Implementação | 6d? | 2009-11-05 | 2009-11-13 | 15 | 0d |  |
| 17 |  | Teste | 2d? | 2009-11-13 | 2009-11-17 | 16 | 0d |  |
| 18 |  | Avaliação do cliente | 0.5d? | 2009-11-17 | 2009-11-17 | 17 | 0d |  |
| 19 |  | Correções | 2d? | 2009-11-17 | 2009-11-19 | 18 | 0d |  |
| 20 |  | Entrega | 1d? | 2009-11-19 | 2009-11-20 | 19 | 0d |  |
| 21 | 1.4 | **Módulo de relatório** | 13d | 2009-11-02 | 2009-11-19 | 6 | 1.5d |  |
| 22 |  | Revisar requisitos | 0.5d | 2009-11-02 | 2009-11-02 |  | 1.5d |  |
| 23 |  | Aprovação | 0.5d | 2009-11-02 | 2009-11-03 | 22 | 1.5d |  |
| 24 |  | Análise e projeto | 2d | 2009-11-03 | 2009-11-05 | 23 | 1.5d |  |
| 25 |  | Implementação | 5d | 2009-11-05 | 2009-11-12 | 24 | 1.5d |  |
| 26 |  | Teste | 2d | 2009-11-12 | 2009-11-16 | 25 | 1.5d |  |
| 27 |  | Avaliação do cliente | 0.5d | 2009-11-16 | 2009-11-16 | 26 | 1.5d |  |
| 28 |  | Correções | 2d | 2009-11-16 | 2009-11-18 | 27 | 1.5d |  |
| 29 |  | Entrega | 0.5d | 2009-11-18 | 2009-11-19 | 28 | 1.5d |  |
| 30 | 1.5 | **Módulo de impressão** | 14d? | 2009-11-02 | 2009-11-20 | 6 | 0.5d |  |
| 31 |  | Revisar requisitos | 0.5d? | 2009-11-02 | 2009-11-02 |  | 5.5d |  |
| 32 |  | Aprovação | 0.5d? | 2009-11-02 | 2009-11-03 | 31 | 5.5d |  |
| 33 |  | Análise e projeto | 2d? | 2009-11-03 | 2009-11-05 | 32 | 5.5d |  |
| 34 |  | Implementação | 5d? | 2009-11-05 | 2009-11-12 | 33 | 5.5d |  |
| 35 |  | Teste | 1d? | 2009-11-12 | 2009-11-13 | 34 | 5.5d |  |
| 36 |  | Avaliação do cliente | 0.5d? | 2009-11-17 | 2009-11-17 | 17 | 0.5d |  |
| 37 |  | Correções | 2d? | 2009-11-17 | 2009-11-19 | 36 | 0.5d |  |
| 38 |  | Entrega | 0.5d | 2009-11-19 | 2009-11-20 | 37 | 0.5d |  |
| 39 | 1.6 | **Módulo de Finanças** | 13d | 2009-11-02 | 2009-11-19 | 6 | 1.5d |  |
| 40 |  | Revisar requisitos | 0.5d | 2009-11-02 | 2009-11-02 |  | 5.5d |  |
| 41 |  | Aprovação | 0.5d | 2009-11-02 | 2009-11-03 | 40 | 5.5d |  |
| 42 |  | Análise e projeto | 2d | 2009-11-03 | 2009-11-05 | 41 | 5.5d |  |
| 43 |  | Implementação | 5d | 2009-11-05 | 2009-11-12 | 42 | 5.5d |  |
| 44 |  | Teste | 1d | 2009-11-12 | 2009-11-13 | 43 | 5.5d |  |
| 45 |  | Avaliação do cliente | 0.5d | 2009-11-16 | 2009-11-16 | 26 | 1.5d |  |
| 46 |  | Correções | 2d | 2009-11-16 | 2009-11-18 | 45 | 1.5d |  |
| 47 |  | Entrega | 0.5d | 2009-11-18 | 2009-11-19 | 46 | 1.5d |  |

## Version 2 (saved 2009-10-27, file Projeto_SoluçõesRifa2.mpp)

Last finish 2009-11-20 → 2009-11-24 (+4d). Complete tasks 0 → 20.

Changed:

| ID | Task | Start | Finish | Duration | Complete | Total float | Predecessors | Other |
| --- | --- | --- | --- | --- | --- | --- | --- | --- |
| 1 | **Soluções para Rifas** | 2009-10-13 → 2009-10-12 A (-1d) | 2009-11-20 → 2009-11-24 (+4d) | 28.88d? → 32d? | 0% → 64% |  |  |  |
| 2 | **Declaração do Escopo projeto** | 2009-10-13 → 2009-10-12 A (-1d) | 2009-10-15 → 2009-10-14 A (-1d) | 2.88d? → 2.12d? | 0% → 100% | 0d → none |  |  |
| 3 | Reunião com cliente | 2009-10-13 A | 2009-10-13 A |  | 0% → 100% | 0d → none |  |  |
| 4 | Definição do escopo do produto | 2009-10-13 → 2009-10-12 A (-1d) | 2009-10-15 → 2009-10-13 A (-2d) |  | 0% → 100% | 0d → none |  |  |
| 5 | Aprovação | 2009-10-15 → 2009-10-14 A (-1d) | 2009-10-15 → 2009-10-14 A (-1d) | 0.5d? → 0.12d? | 0% → 100% | 0d → none |  |  |
| 6 | **Definição do escopo do projeto** | 2009-10-15 → 2009-10-14 A (-1d) | 2009-11-02 → 2009-10-29 A (-4d) |  | 0% → 100% | 0d → none |  |  |
| 7 | Modelar negócio | 2009-10-15 → 2009-10-14 A (-1d) | 2009-10-19 → 2009-10-16 A (-3d) |  | 0% → 100% | 0d → none |  |  |
| 8 | Requisitos do sistema e aprovação | 2009-10-19 → 2009-10-16 A (-3d) | 2009-10-20 → 2009-10-19 A (-1d) |  | 0% → 100% | 0d → none |  |  |
| 9 | Contratação da equipe | 2009-10-20 → 2009-10-19 A (-1d) | 2009-10-23 → 2009-10-22 A (-1d) |  | 0% → 100% | 0d → none |  |  |
| 10 | Aquisição de recursos | 2009-10-23 → 2009-10-22 A (-1d) | 2009-10-30 → 2009-10-29 A (-1d) |  | 0% → 100% | 0d → none |  |  |
| 11 | Definição de custo e aprovação | 2009-10-30 → 2009-10-29 A (-1d) | 2009-11-02 → 2009-10-29 A (-4d) |  | 0% → 100% | 0d → none |  |  |
| 12 | **Módulo de Cadastro** | 2009-11-02 → 2009-10-29 A (-4d) | 2009-11-20 → 2009-11-24 (+4d) | 14.5d? → 18.38d | 0% → 52% |  |  |  |
| 13 | Revisar requisitos | 2009-11-02 → 2009-10-29 A (-4d) | 2009-11-02 → 2009-10-30 (-3d) | 0.5d? → 1d | 0% → 50% | 0d → 9.75d |  |  |
| 14 | Aprovação | 2009-11-02 → 2009-10-30 A (-3d) | 2009-11-03 → 2009-11-02 (-1d) | 0.5d? → 1d | 0% → 50% | 0d → 9.75d |  |  |
| 15 | Análise e projeto | 2009-11-03 → 2009-11-02 A (-1d) | 2009-11-05 → 2009-11-04 (-1d) | 2d? → 3d | 0% → 67% | 0d → 7.88d |  |  |
| 16 | Implementação | 2009-11-05 → 2009-11-04 A (-1d) | 2009-11-13 → 2009-11-16 (+3d) | 6d? → 9d | 0% → 49% | 0d → 4.5d |  |  |
| 17 | Teste | 2009-11-13 → 2009-11-17 A (+4d) | 2009-11-17 → 2009-11-19 (+2d) | 2d? → 3d | 0% → 67% | 0d → 2.5d |  |  |
| 18 | Avaliação do cliente | 2009-11-17 → 2009-11-20 A (+3d) | 2009-11-17 → 2009-11-20 (+3d) | 0.5d? → 1d | 0% → 50% | 0d → 2d |  |  |
| 19 | Correções | 2009-11-17 → 2009-11-20 A (+3d) | 2009-11-19 → 2009-11-20 A (+1d) | 2d? → 1d | 0% → 100% | 0d → none |  |  |
| 20 | Entrega | 2009-11-19 → 2009-11-23 (+4d) | 2009-11-20 → 2009-11-24 (+4d) | 1d? → 2d |  |  |  |  |
| 21 | **Módulo de relatório** | 2009-11-02 → 2009-10-29 A (-4d) | 2009-11-19 → 2009-11-17 (-2d) |  | 0% → 77% | 1.5d → 5.38d |  |  |
| 22 | Revisar requisitos | 2009-11-02 → 2009-10-29 A (-4d) | 2009-11-02 → 2009-10-30 A (-3d) |  | 0% → 100% | 1.5d → none |  |  |
| 23 | Aprovação | 2009-11-02 → 2009-10-30 A (-3d) | 2009-11-03 → 2009-10-30 A (-4d) |  | 0% → 100% | 1.5d → none |  |  |
| 24 | Análise e projeto | 2009-11-03 → 2009-10-30 A (-4d) | 2009-11-05 → 2009-11-04 A (-1d) | 2d → 3.38d | 0% → 100% | 1.5d → none |  | constraint none → finish no earlier than 2009-11-04 |
| 25 | Implementação | 2009-11-05 A | 2009-11-12 → 2009-11-11 A (-1d) |  | 0% → 100% | 1.5d → none |  |  |
| 26 | Teste | 2009-11-12 → 2009-11-10 A (-2d) | 2009-11-16 → 2009-11-12 (-4d) |  | 0% → 88% | 1.5d → 5.38d |  |  |
| 27 | Avaliação do cliente | 2009-11-16 → 2009-11-12 (-4d) | 2009-11-16 → 2009-11-13 (-3d) |  |  | 1.5d → 5.38d |  |  |
| 28 | Correções | 2009-11-16 → 2009-11-13 (-3d) | 2009-11-18 → 2009-11-17 (-1d) |  |  | 1.5d → 5.38d |  |  |
| 29 | Entrega | 2009-11-18 → 2009-11-17 (-1d) | 2009-11-19 → 2009-11-17 (-2d) |  |  | 1.5d → 5.38d |  |  |
| 30 | **Módulo de impressão** | 2009-11-02 → 2009-10-29 A (-4d) | 2009-11-20 → 2009-11-16 (-4d) | 14d? → 12d? | 0% → 67% | 0.5d → 6.38d |  |  |
| 31 | Revisar requisitos | 2009-11-02 → 2009-10-29 A (-4d) | 2009-11-02 → 2009-10-30 A (-3d) |  | 0% → 100% | 5.5d → none |  |  |
| 32 | Aprovação | 2009-11-02 → 2009-10-30 A (-3d) | 2009-11-03 → 2009-10-30 A (-4d) |  | 0% → 100% | 5.5d → none |  |  |
| 33 | Análise e projeto | 2009-11-03 → 2009-10-30 A (-4d) | 2009-11-05 → 2009-11-03 A (-2d) |  | 0% → 100% | 5.5d → none |  |  |
| 34 | Implementação | 2009-11-05 → 2009-11-03 A (-2d) | 2009-11-12 → 2009-11-10 A (-2d) |  | 0% → 100% | 5.5d → none |  |  |
| 35 | Teste | 2009-11-12 → 2009-11-10 (-2d) | 2009-11-13 → 2009-11-11 (-2d) |  |  | 5.5d → 6.38d |  |  |
| 36 | Avaliação do cliente | 2009-11-17 → 2009-11-11 (-6d) | 2009-11-17 → 2009-11-12 (-5d) |  |  | 0.5d → 6.38d | 17 → 35, 17 |  |
| 37 | Correções | 2009-11-17 → 2009-11-12 (-5d) | 2009-11-19 → 2009-11-16 (-3d) |  |  | 0.5d → 6.38d |  |  |
| 38 | Entrega | 2009-11-19 → 2009-11-16 (-3d) | 2009-11-20 → 2009-11-16 (-4d) |  |  | 0.5d → 6.38d |  |  |
| 39 | **Módulo de Finanças** | 2009-11-02 → 2009-10-29 A (-4d) | 2009-11-19 → 2009-11-16 (-3d) | 13d → 12d | 0% → 25% | 1.5d → 6.38d |  |  |
| 40 | Revisar requisitos | 2009-11-02 → 2009-10-29 A (-4d) | 2009-11-02 → 2009-10-30 A (-3d) |  | 0% → 100% | 5.5d → none |  |  |
| 41 | Aprovação | 2009-11-02 → 2009-10-30 A (-3d) | 2009-11-03 → 2009-10-30 A (-4d) |  | 0% → 100% | 5.5d → none |  |  |
| 42 | Análise e projeto | 2009-11-03 → 2009-10-30 A (-4d) | 2009-11-05 → 2009-11-03 A (-2d) |  | 0% → 100% | 5.5d → none |  |  |
| 43 | Implementação | 2009-11-05 → 2009-11-03 (-2d) | 2009-11-12 → 2009-11-10 (-2d) |  |  | 5.5d → 6.38d |  |  |
| 44 | Teste | 2009-11-12 → 2009-11-10 (-2d) | 2009-11-13 → 2009-11-11 (-2d) |  |  | 5.5d → 6.38d |  |  |
| 45 | Avaliação do cliente | 2009-11-16 → 2009-11-11 (-5d) | 2009-11-16 → 2009-11-12 (-4d) |  |  | 1.5d → 6.38d | 26 → 44, 26 |  |
| 46 | Correções | 2009-11-16 → 2009-11-12 (-4d) | 2009-11-18 → 2009-11-16 (-2d) |  |  | 1.5d → 6.38d |  |  |
| 47 | Entrega | 2009-11-18 → 2009-11-16 (-2d) | 2009-11-19 → 2009-11-16 (-3d) |  |  | 1.5d → 6.38d |  |  |
